# PANCE

Schedule from Planner, 2009-11-28 to 2010-03-08.
ELECTROJAPONESA S.A.
Phase: PROGRAMACION

## Calendars

- Predeterminado: Mon-Fri 08:00-12:00, 13:00-17:00; Sat 08:00-12:00; Sun off. Exceptions (off unless hours are given): 2009-12-08, 2009-12-25, 2010-01-01.

## Resources

| Resource | Group | Rate |
| --- | --- | --- |
| OMAR LONDOÑO | ELECTRO |  |
| JULIAN TRIVIÑO | ELECTRO |  |
| WALTER ANDRES MARQUEZ | ELECTRO | 1250000 |
| JULIAN MONDRAGON | ELECTRO | 450000 |
| JIAVANY ANDRES | ELECTRO | 850000 |
| MAURICIO OIDOR | ELECTRO |  |

## Schedule

| ID | WBS | Task | Start | Finish | Complete | Constraint | Resources | Work |
| --- | --- | --- | --- | --- | --- | --- | --- | --- |
| 1 | 1 | **INVENTARIOS** | 2009-11-28 | 2009-11-30 |  |  |  | 56h |
| 2 | 1.1 | **DATOS DE CONTROL** | 2009-11-28 | 2009-11-30 |  |  |  | 56h |
| 3 | 1.1.1 | ARTICULOS | 2009-11-28 | 2009-11-30 | 100% |  |  | 8h |
| 4 | 1.1.2 | REFERENCIAS | 2009-11-28 | 2009-11-30 | 100% |  |  | 8h |
| 5 | 1.1.3 | GRUPOS | 2009-11-28 | 2009-11-30 | 100% |  |  | 8h |
| 6 | 1.1.4 | ESTRUCTURA DE GRUPOS | 2009-11-28 | 2009-11-30 | 100% |  |  | 8h |
| 7 | 1.1.5 | MARCAS | 2009-11-28 | 2009-11-30 | 100% |  |  | 8h |
| 8 | 1.1.6 | TIPOS DE UNIDAD DE MEDIDA | 2009-11-28 | 2009-11-30 | 100% |  |  | 8h |
| 9 | 1.1.7 | UNIDADES | 2009-11-28 | 2009-11-30 | 100% |  |  | 8h |
| 10 | 2 | **MODULO PROVEEDORES** | 2009-11-28 | 2010-02-02 |  |  |  | 247.5h |
| 11 | 2.1 | **COMPRAS** | 2009-11-28 | 2009-12-16 |  |  |  | 20.5h |
| 12 | 2.1.1 | LACO | 2009-11-28 | 2009-11-30 | 100% |  |  | 8h |
| 13 | 2.1.2 | COMBOS | 2009-11-28 | 2009-11-28 | 100% |  |  | 1h |
| 14 | 2.1.3 | LISTA DE PRECIOS | 2009-11-28 | 2009-11-28 | 100% |  |  | 0.5h |
| 15 | 2.1.4 | ORDENES DE COMPRA | 2009-11-28 | 2009-11-28 |  |  |  | 2h |
| 16 | 2.1.5 | ENTRADA DE MERCANCIA | 2009-11-28 | 2009-11-28 |  |  |  | 3h |
| 17 | 2.1.6 | **ENTRADAS EN CONSIGNACION** | 2009-12-14 | 2009-12-16 |  |  |  | 6h |
| 18 | 2.1.6.1 | Adicionar | 2009-12-14 | 2009-12-14 |  | must start on 2009-12-14 | JULIAN MONDRAGON [50%] | 4h |
| 19 | 2.1.6.2 | Consultar | 2009-12-16 | 2009-12-16 |  | must start on 2009-12-16 | JULIAN MONDRAGON [50%] | 2h |
| 20 | 2.2 | **CUENTAS POR PAGAR** | 2009-12-07 | 2010-02-02 |  |  |  | 123h |
| 21 | 2.2.1 | **FACTURACION PROVEEDORES** | 2009-12-07 | 2009-12-11 |  |  |  | 28h |
| 22 | 2.2.1.1 | Adicionar | 2009-12-07 | 2009-12-10 |  | must start on 2009-12-07 | JULIAN MONDRAGON | 24h |
| 23 | 2.2.1.2 | Consultar | 2009-12-11 | 2009-12-11 |  | must start on 2009-12-11 | JULIAN MONDRAGON | 4h |
| 24 | 2.2.2 | **FACTURACION MERCANCIA EN CONSIGNACION** | 2010-01-30 | 2010-02-02 |  |  |  | 10h |
| 25 | 2.2.2.1 | Adicionar | 2010-02-01 | 2010-02-02 |  | must start on 2010-02-01 | JULIAN MONDRAGON [50%] | 8h |
| 26 | 2.2.2.2 | Consultar | 2010-01-30 | 2010-01-30 |  | must start on 2010-01-30 |  | 2h |

| ID | WBS | Task | Start | Finish | Complete | Constraint | Resources | Work |
| --- | --- | --- | --- | --- | --- | --- | --- | --- |
| 27 | 2.2.3 | **PROGRAMACION DE PAGOS A PROVEEDORES** | 2009-12-21 | 2009-12-30 |  |  |  | 33h |
| 28 | 2.2.3.1 | Adicionar | 2009-12-21 | 2009-12-28 |  | must start on 2009-12-21 | JULIAN MONDRAGON [50%] | 20h |
| 29 | 2.2.3.2 | Consultar | 2009-12-26 | 2009-12-28 |  | must start on 2009-12-26 | JULIAN MONDRAGON [50%] | 3h |
| 30 | 2.2.3.3 | Eliminar | 2009-12-28 | 2009-12-28 |  | must start on 2009-12-28 | JULIAN MONDRAGON [50%] | 2h |
| 31 | 2.2.3.4 | Modificar | 2009-12-29 | 2009-12-30 |  | must start on 2009-12-29 | JULIAN MONDRAGON [50%] | 8h |
| 32 | 2.2.4 | AUTORIZACION DE PAGOS | 2010-01-02 | 2010-01-06 |  | must start on 2010-01-02 | JULIAN MONDRAGON [50%] | 12h |
| 33 | 2.2.5 | PAGOS A PROVEEDORES | 2010-01-07 | 2010-01-08 |  | must start on 2010-01-07 | JULIAN MONDRAGON [50%] | 8h |
| 34 | 2.2.6 | **PAGOS ANTICIPADOS** | 2010-01-08 | 2010-01-11 |  |  |  | 12h |
| 35 | 2.2.6.1 | Adicionar | 2010-01-08 | 2010-01-11 |  | must start on 2010-01-08 | JULIAN MONDRAGON [50%] | 8h |
| 36 | 2.2.6.2 | Consultar | 2010-01-11 | 2010-01-11 |  | must start on 2010-01-11 | JULIAN MONDRAGON [50%] | 4h |
| 37 | 2.2.7 | **DEVOLUCION DE COMPRAS DE MERCANCIA** | 2010-01-12 | 2010-01-18 |  |  |  | 20h |
| 38 | 2.2.7.1 | Adicionar | 2010-01-12 | 2010-01-15 |  | must start on 2010-01-12 | JULIAN MONDRAGON [50%] | 16h |
| 39 | 2.2.7.2 | Consultar | 2010-01-16 | 2010-01-18 |  | must start on 2010-01-16 | JULIAN MONDRAGON [50%] | 3h |
| 40 | 2.2.7.3 | Anular | 2010-01-18 | 2010-01-18 |  | must start on 2010-01-18 | JULIAN MONDRAGON [50%] | 1h |
| 41 | 2.3 | **DATOS DE CONTROL** | 2009-11-28 | 2009-11-30 |  |  |  | 104h |
| 42 | 2.3.1 | Proveedores | 2009-11-28 | 2009-11-30 | 100% |  |  | 8h |
| 43 | 2.3.2 | Contactos | 2009-11-28 | 2009-11-30 | 100% |  |  | 8h |
| 44 | 2.3.3 | Periodos de Pago | 2009-11-28 | 2009-11-30 | 100% |  |  | 8h |
| 45 | 2.3.4 | Sucursales proveedores | 2009-11-28 | 2009-11-30 | 100% |  |  | 8h |
| 46 | 2.3.5 | Servicios | 2009-11-28 | 2009-11-30 | 100% |  |  | 8h |
| 47 | 2.3.6 | Facturación por publicidad | 2009-11-28 | 2009-11-30 | 100% |  |  | 8h |
| 48 | 2.3.7 | Competidores | 2009-11-28 | 2009-11-30 | 100% |  |  | 8h |
| 49 | 2.3.8 | Márgenes listas de precio detallistas | 2009-11-28 | 2009-11-30 | 100% |  |  | 8h |
| 50 | 2.3.9 | Márgenes listas de precio Mayoristas | 2009-11-28 | 2009-11-30 | 100% |  |  | 8h |
| 51 | 2.3.10 | Cargos | 2009-11-28 | 2009-11-30 | 100% |  |  | 8h |
| 52 | 2.3.11 | Marcas por proveedor | 2009-11-28 | 2009-11-30 | 100% |  |  | 8h |
| 53 | 2.3.12 | Plazos de Pago | 2009-11-28 | 2009-11-30 | 100% |  |  | 8h |
| 54 | 2.3.13 | Transportadores proveedores | 2009-11-28 | 2009-11-30 | 100% |  |  | 8h |
| 55 | 3 | MODULO PRODUCCION | 2009-11-28 | 2009-11-30 |  |  |  | 8h |

| ID | WBS | Task | Start | Finish | Complete | Constraint | Resources | Work |
| --- | --- | --- | --- | --- | --- | --- | --- | --- |
| 56 | 4 | **MODULO CLIENTES** | 2009-11-28 | 2010-02-18 |  |  |  | 644h |
| 57 | 4.1 | **CLIENTES MAYORISTAS** | 2009-11-28 | 2010-02-04 |  |  |  | 484h |
| 58 | 4.1.1 | **VENTAS** | 2009-12-01 | 2010-01-04 |  |  |  | 168h |
| 59 | 4.1.1.1 | **PEDIDOS MAYORISTAS** | 2009-12-01 | 2009-12-14 |  |  |  | 64h |
| 60 | 4.1.1.1.1 | Adicionar | 2009-12-01 | 2009-12-10 |  | must start on 2009-12-01 | WALTER ANDRES MARQUEZ | 56h |
| 61 | 4.1.1.1.2 | Consultar | 2009-12-14 | 2009-12-14 |  | must start on 2009-12-14 | WALTER ANDRES MARQUEZ | 4h |
| 62 | 4.1.1.1.3 | Anular | 2009-12-14 | 2009-12-14 |  | must start on 2009-12-14 | WALTER ANDRES MARQUEZ | 4h |
| 63 | 4.1.1.2 | **PEDIDOS CLIENTES OCACIONALES** | 2009-12-16 | 2009-12-18 |  |  |  | 24h |
| 64 | 4.1.1.2.1 | Adicionar | 2009-12-16 | 2009-12-17 |  | must start on 2009-12-16 | WALTER ANDRES MARQUEZ | 16h |
| 65 | 4.1.1.2.2 | Consultar | 2009-12-18 | 2009-12-18 |  | must start on 2009-12-18 | WALTER ANDRES MARQUEZ | 4h |
| 66 | 4.1.1.2.3 | anular | 2009-12-18 | 2009-12-18 |  | must start on 2009-12-18 | WALTER ANDRES MARQUEZ | 4h |
| 67 | 4.1.1.3 | AUTORIZACION PEDIDOS MAYORISTAS | 2009-12-19 | 2009-12-24 |  | must start on 2009-12-19 | JIAVANY ANDRES | 32h |
| 68 | 4.1.1.4 | CANCELACION PEDIDOS POR VENDEDOR | 2009-12-26 | 2009-12-26 |  | must start on 2009-12-26 | JIAVANY ANDRES | 4h |
| 69 | 4.1.1.5 | CANCELACION DE PEDIDOS SEPARADOS | 2009-12-26 | 2009-12-26 |  | must start on 2009-12-26 | JIAVANY ANDRES | 4h |
| 70 | 4.1.1.6 | DESPACHO VENTAS MAYORISTAS | 2009-12-28 | 2010-01-04 |  | must start on 2009-12-28 | JIAVANY ANDRES | 40h |
| 71 | 4.1.2 | **COBRANZA** | 2009-12-28 | 2010-02-04 |  |  |  | 252h |
| 72 | 4.1.2.1 | **ANTICIPOS DE CLIENTES** | 2009-12-28 | 2010-01-04 |  |  |  | 44h |
| 73 | 4.1.2.1.1 | Adicionar | 2009-12-28 | 2010-01-04 | 100% | must start on 2009-12-28 | JIAVANY ANDRES | 40h |
| 74 | 4.1.2.1.2 | Consultar | 2010-01-02 | 2010-01-02 | 100% | must start on 2010-01-02 | JIAVANY ANDRES | 4h |
| 75 | 4.1.2.2 | PAGOS EN CAJA | 2010-01-02 | 2010-01-08 |  | must start on 2010-01-02 | WALTER ANDRES MARQUEZ | 40h |
| 76 | 4.1.2.3 | RECIBOS PROVISIONALES | 2010-01-08 | 2010-01-14 |  | must start on 2010-01-08 | WALTER ANDRES MARQUEZ | 40h |
| 77 | 4.1.2.4 | TRANSFERENCIAS BANCARIAS | 2010-01-14 | 2010-01-15 |  | must start on 2010-01-14 | WALTER ANDRES MARQUEZ | 16h |
| 78 | 4.1.2.5 | CONSIGNACION DE CLIENTES | 2010-01-16 | 2010-01-19 |  | must start on 2010-01-16 | WALTER ANDRES MARQUEZ | 16h |
| 79 | 4.1.2.6 | CHEQUES DEVUELTOS | 2010-01-19 | 2010-01-20 |  | must start on 2010-01-19 | WALTER ANDRES MARQUEZ | 16h |
| 80 | 4.1.2.7 | RECONSIGNACION DE CHEQUES | 2010-01-23 | 2010-01-25 |  | must start on 2010-01-23 | WALTER ANDRES MARQUEZ | 8h |
| 81 | 4.1.2.8 | CAMBIO DE CHEQUES DEVUELTOS | 2010-01-25 | 2010-01-26 |  | must start on 2010-01-25 |  | 16h |

| ID | WBS | Task | Start | Finish | Complete | Constraint | Resources | Work |
| --- | --- | --- | --- | --- | --- | --- | --- | --- |
| 82 | 4.1.2.9 | **DEVOLUCION DE DINERO A CLIENTES** | 2010-01-27 | 2010-02-02 |  | must start on 2010-01-27 | WALTER ANDRES MARQUEZ | 40h |
| 83 | 4.1.2.9.1 | adicionar devolucion anticipos | 2010-01-27 | 2010-01-28 | 95% | must start on 2010-01-27 | JIAVANY ANDRES | 16h |
| 84 | 4.1.2.9.2 | Autorización devolución de dinero | 2010-01-29 | 2010-01-29 | 100% | must start on 2010-01-29 | JIAVANY ANDRES | 8h |
| 85 | 4.1.2.9.3 | Comprobante de egreso con cheque | 2010-01-30 | 2010-02-02 | 100% | must start on 2010-01-30 | JIAVANY ANDRES | 16h |
| 86 | 4.1.2.10 | TRASLADO DE CUENTAS | 2010-02-03 | 2010-02-03 |  | must start on 2010-02-03 | WALTER ANDRES MARQUEZ | 8h |
| 87 | 4.1.2.11 | TRASLADO DE ANTICIPOS | 2010-02-04 | 2010-02-04 |  | must start on 2010-02-04 | WALTER ANDRES MARQUEZ | 8h |
| 88 | 4.1.3 | **DATOS DE CONTROL** | 2009-11-28 | 2009-12-16 |  | must start on 2010-02-16 |  | 64h |
| 89 | 4.1.3.1 | INFORMACION CLIENTES MAYORISTAS | 2009-11-28 | 2009-11-30 | 100% |  |  | 8h |
| 90 | 4.1.3.2 | SUCURSALES MAYORISTAS | 2009-11-28 | 2009-11-30 | 100% |  |  | 8h |
| 91 | 4.1.3.3 | CONTACTOS MAYORISTAS | 2009-11-28 | 2009-11-30 | 100% |  |  | 8h |
| 92 | 4.1.3.4 | VENDEDORES / COBRADORES | 2009-11-28 | 2009-11-30 | 100% |  |  | 8h |
| 93 | 4.1.3.5 | ZONAS DE VENTA | 2009-11-28 | 2009-11-30 | 100% |  |  | 8h |
| 94 | 4.1.3.6 | COMISIONES | 2009-11-28 | 2009-11-30 | 100% |  |  | 8h |
| 95 | 4.1.3.7 | TIPOS DE GARANTIA | 2009-11-28 | 2009-11-30 | 100% |  |  | 8h |
| 96 | 4.1.3.8 | CONCEPTOS DE DEVOLUCION DE CHEQUES | 2009-12-16 | 2009-12-16 | 100% | must start on 2009-12-16 | JIAVANY ANDRES [50%] | 4h |
| 97 | 4.1.3.9 | CONTROL DE RECIBOS PROVISIONALES | 2009-12-16 | 2009-12-16 | 100% | must start on 2009-12-16 | JIAVANY ANDRES [50%] | 4h |
| 98 | 4.2 | **CLIENTES MINORISTAS** | 2009-11-28 | 2010-02-18 |  |  |  | 160h |
| 99 | 4.2.1 | VENTAS | 2010-02-18 | 2010-02-18 |  | must start on 2010-02-18 |  | 4h |
| 100 | 4.2.2 | CREDITOS | 2009-11-28 | 2009-11-30 |  |  |  | 8h |
| 101 | 4.2.3 | COBRANZA | 2010-02-18 | 2010-02-18 |  | must start on 2010-02-18 |  | 4h |
| 102 | 4.2.4 | **DATOS DE CONTROL** | 2009-12-19 | 2010-01-13 |  | must start on 2010-02-18 |  | 144h |
| 103 | 4.2.4.1 | Vendedores minoristas | 2010-01-12 | 2010-01-13 |  | must start on 2010-01-12 | JULIAN TRIVIÑO | 16h |
| 104 | 4.2.4.2 | Control Contrato vendedores minoristas | 2010-01-08 | 2010-01-11 |  | must start on 2010-01-08 | JULIAN TRIVIÑO | 16h |
| 105 | 4.2.4.3 | Forma de liquidaci'on vendedores minoristas | 2010-01-06 | 2010-01-07 |  | must start on 2010-01-06 | JULIAN TRIVIÑO | 16h |
| 106 | 4.2.4.4 | Rangos para bonificaciones en ventas | 2010-01-04 | 2010-01-05 |  | must start on 2010-01-04 | JULIAN TRIVIÑO | 16h |
| 107 | 4.2.4.5 | Bonificaciones jefes de venta | 2009-12-31 | 2010-01-04 |  | must start on 2009-12-31 | JULIAN TRIVIÑO | 16h |
| 108 | 4.2.4.6 | Cobradores | 2009-12-29 | 2009-12-30 |  | must start on 2009-12-29 | JULIAN TRIVIÑO | 16h |
| 109 | 4.2.4.7 | Zonas de cobro minoristas | 2009-12-24 | 2009-12-28 |  | must start on 2009-12-24 | JULIAN TRIVIÑO | 16h |
| 110 | 4.2.4.8 | Corresponsales de cobranza | 2009-12-22 | 2009-12-23 |  | must start on 2009-12-22 | JULIAN TRIVIÑO | 16h |
| 111 | 4.2.4.9 | Bonificaciones y comisiones cobranza | 2009-12-19 | 2009-12-22 |  | must start on 2009-12-19 | JULIAN TRIVIÑO | 16h |

| ID | WBS | Task | Start | Finish | Complete | Constraint | Resources | Work |
| --- | --- | --- | --- | --- | --- | --- | --- | --- |
| 112 | 5 | **MODULO MERCADEO** | 2010-02-01 | 2010-02-22 |  |  |  | 82h |
| 113 | 5.1 | **OPERACIONES** | 2010-02-02 | 2010-02-22 |  |  |  | 74h |
| 114 | 5.1.1 | Órdenes de servicio | 2010-02-02 | 2010-02-09 |  | must start on 2010-02-02 | JULIAN MONDRAGON [50%] | 24h |
| 115 | 5.1.2 | Facturación de los proveedores de publicidad | 2010-02-08 | 2010-02-15 |  | must start on 2010-02-08 | JULIAN MONDRAGON [50%] | 24h |
| 116 | 5.1.3 | **Facturación a proveedores de merancia por publicidad** | 2010-02-15 | 2010-02-22 |  | must start on 2010-02-15 | JULIAN MONDRAGON | 26h |
| 117 | 5.1.3.1 | Adicionar | 2010-02-15 | 2010-02-22 |  | must start on 2010-02-15 | JULIAN MONDRAGON [50%] | 24h |
| 118 | 5.1.3.2 | Autorización descuentos | 2010-02-22 | 2010-02-22 |  | must start on 2010-02-22 | JULIAN MONDRAGON [50%] | 2h |
| 119 | 5.2 | **DATOS DE CONTROL** | 2010-02-01 | 2010-02-01 |  |  |  | 8h |
| 120 | 5.2.1 | CONCEPTOS DE PUBLICIDAD | 2010-02-01 | 2010-02-01 |  | must start on 2010-02-01 | JULIAN MONDRAGON | 8h |
| 121 | 6 | MODULO FINANCIERA | 2009-11-28 | 2009-11-30 |  |  |  | 8h |
| 122 | 7 | MODULO LOGISTICA | 2009-11-28 | 2009-11-30 |  |  |  | 8h |
| 123 | 8 | **MODULO GESTION HUMANA** | 2009-11-28 | 2010-01-30 |  |  |  | 350h |
| 124 | 8.1 | **PARAMETROS NOMINA** | 2009-11-28 | 2009-12-17 |  |  |  | 130h |
| 125 | 8.1.1 | INFORMACION PERSONAL EMPLEADOS | 2009-12-07 | 2009-12-17 | 90% | must start on 2009-12-07 | JULIAN TRIVIÑO | 64h |
| 126 | 8.1.2 | DEPARTAMENTOS | 2009-12-09 | 2009-12-09 | 100% | must start on 2009-12-09 | JULIAN TRIVIÑO | 8h |
| 127 | 8.1.3 | SECCIONES | 2009-12-10 | 2009-12-10 | 100% | must start on 2009-12-10 | JULIAN TRIVIÑO | 8h |
| 128 | 8.1.4 | CARGOS | 2009-12-11 | 2009-12-11 | 100% | must start on 2009-12-11 | JULIAN TRIVIÑO | 8h |
| 129 | 8.1.5 | AFICIONES | 2009-12-14 | 2009-12-14 | 100% | must start on 2009-12-14 | JULIAN TRIVIÑO | 8h |
| 130 | 8.1.6 | DEPORTES | 2009-12-15 | 2009-12-15 | 100% | must start on 2009-12-15 | JULIAN TRIVIÑO | 8h |
| 131 | 8.1.7 | ENTIDADES PARA FISCALES | 2009-12-12 | 2009-12-14 | 100% | must start on 2009-12-12 | JULIAN TRIVIÑO | 8h |
| 132 | 8.1.8 | TIPOS DE CONTRATO | 2009-11-28 | 2009-11-28 |  |  |  | 2h |
| 133 | 8.1.9 | TRANSACCIONES CONTABLES DE NOMINA | 2009-11-28 | 2009-11-28 |  |  |  | 4h |
| 134 | 8.1.10 | TRANSACCIONES TIEMPO DE NOMINA | 2009-11-28 | 2009-11-28 |  |  |  | 1h |
| 135 | 8.1.11 | PLANILLAS | 2009-11-28 | 2009-11-28 |  |  |  | 1h |
| 136 | 8.1.12 | MOTIVOS DE INCAPACIDAD | 2009-11-28 | 2009-11-28 |  |  |  | 1h |
| 137 | 8.1.13 | TURNOS LABORABLES | 2009-11-28 | 2009-11-28 |  |  |  | 1h |
| 138 | 8.1.14 | MOTIVOS DE RETIRO | 2009-12-16 | 2009-12-16 | 100% | must start on 2009-12-16 | JULIAN TRIVIÑO | 8h |

| ID | WBS | Task | Start | Finish | Constraint | Work |
| --- | --- | --- | --- | --- | --- | --- |
| 139 | 8.2 | **OPERACIONES CON PLANILLAS** | 2009-11-28 | 2010-01-22 |  | 83h |
| 140 | 8.2.1 | REPORTE DE NOVEDADES PARA PLANILLA | 2009-11-28 | 2009-11-28 |  | 3h |
| 141 | 8.2.2 | CALCULO DE PRODUCTIVIDAD | 2009-11-28 | 2009-11-30 |  | 8h |
| 142 | 8.2.3 | CALCULO DE NOVEDADES FIJAS | 2010-01-20 | 2010-01-20 | must start on 2010-01-20 | 6h |
| 143 | 8.2.4 | INTERFASE DE NOVEDADES DE TIEMPOS | 2010-01-20 | 2010-01-20 | must start on 2010-01-20 | 8h |
| 144 | 8.2.5 | SALUD Y PENSION EN PLANILLA | 2010-01-20 | 2010-01-20 | must start on 2010-01-20 | 8h |
| 145 | 8.2.6 | PRIMA EN PLANILLA | 2010-01-21 | 2010-01-21 | must start on 2010-01-21 | 6h |
| 146 | 8.2.7 | LISTA PLANILLA | 2010-01-21 | 2010-01-21 | must start on 2010-01-21 | 6h |
| 147 | 8.2.8 | PLANILLA PARA FIRMA | 2010-01-21 | 2010-01-21 | must start on 2010-01-21 | 2h |
| 148 | 8.2.9 | PAGO CON CHEQUE | 2010-01-22 | 2010-01-22 | must start on 2010-01-22 | 8h |
| 149 | 8.2.10 | PAGO CON TRANSFERENCIA BANCARIA | 2010-01-22 | 2010-01-22 | must start on 2010-01-22 | 8h |
| 150 | 8.2.11 | PAGO EN EFECTIVO | 2010-01-22 | 2010-01-22 | must start on 2010-01-22 | 8h |
| 151 | 8.2.12 | COMPROBANTE DE PAGO POR EMPLEADO | 2010-01-22 | 2010-01-22 | must start on 2010-01-22 | 6h |
| 152 | 8.2.13 | INTERESES DE CESANTIA EN PLANILLA | 2010-01-22 | 2010-01-22 | must start on 2010-01-22 | 6h |
| 153 | 8.3 | **PROCESOS MENSUALES** | 2010-01-23 | 2010-01-30 |  | 112h |
| 154 | 8.3.1 | PROVISION DE PRESTACIONES SOCIALES | 2010-01-23 | 2010-01-30 | must start on 2010-01-23 | 48h |
| 155 | 8.3.2 | PROVISION DE PARAFISCALES | 2010-01-23 | 2010-01-30 | must start on 2010-01-23 | 48h |
| 156 | 8.3.3 | GENERACION DE PLANOS PARAFISCALES | 2010-01-23 | 2010-01-25 | must start on 2010-01-23 | 8h |
| 157 | 8.3.4 | PAGO DE PARAFISCALES | 2010-01-23 | 2010-01-25 | must start on 2010-01-23 | 8h |
| 158 | 8.4 | **PROCESOS ANUALES** | 2010-01-25 | 2010-01-25 |  | 10h |
| 159 | 8.4.1 | CAMBIO DE SALARIO MINIMO | 2010-01-25 | 2010-01-25 | must start on 2010-01-25 | 5h |
| 160 | 8.4.2 | TRASLADO FONDO DE CESANTIAS | 2010-01-25 | 2010-01-25 | must start on 2010-01-25 | 5h |
| 161 | 8.5 | **INFORMES DE NOMINA** | 2010-01-26 | 2010-01-26 |  | 15h |
| 162 | 8.5.1 | PRESTACIONES SOCIALES | 2010-01-26 | 2010-01-26 | must start on 2010-01-26 | 5h |
| 163 | 8.5.2 | PROMEDIOS DE INGRESOS | 2010-01-26 | 2010-01-26 | must start on 2010-01-26 | 5h |
| 164 | 8.5.3 | CERTIFICADOS DE INGRESOS | 2010-01-26 | 2010-01-26 | must start on 2010-01-26 | 5h |

| ID | WBS | Task | Start | Finish | Complete | Constraint | Resources | Work |
| --- | --- | --- | --- | --- | --- | --- | --- | --- |
| 165 | 9 | **MODULO CONTABILIDAD** | 2009-11-28 | 2010-03-08 |  | must start on 2009-11-30 |  | 366.5h |
| 166 | 9.1 | **OPERACIONES DIARIAS** | 2009-12-04 | 2009-12-04 |  |  |  | 8h |
| 167 | 9.1.1 | **MOVIMIENTOS CONTABLES** | 2009-12-04 | 2009-12-04 |  |  | JULIAN MONDRAGON | 8h |
| 168 | 9.1.1.1 | Adicionar | 2009-12-04 | 2009-12-04 |  | must start on 2009-12-04 |  | 2h |
| 169 | 9.1.1.2 | Consultar | 2009-12-04 | 2009-12-04 |  | must start on 2009-12-04 |  | 2h |
| 170 | 9.1.1.3 | Eliminar | 2009-12-04 | 2009-12-04 |  | must start on 2009-12-04 |  | 2h |
| 171 | 9.1.1.4 | Modificar | 2009-12-04 | 2009-12-04 |  | must start on 2009-12-04 |  | 2h |
| 172 | 9.2 | **BALANCES** | 2010-02-08 | 2010-02-19 |  |  | JULIAN MONDRAGON | 80h |
| 173 | 9.2.1 | BALANCE GENERAL | 2010-02-08 | 2010-02-12 |  | must start on 2010-02-08 | JULIAN MONDRAGON | 40h |
| 174 | 9.2.2 | ESTADO DE GANACIAS Y PERDIDAS | 2010-02-15 | 2010-02-17 |  | must start on 2010-02-15 | JULIAN MONDRAGON | 24h |
| 175 | 9.2.3 | BALANCE DE COMPROBACION | 2010-02-18 | 2010-02-19 |  | must start on 2010-02-18 | JULIAN MONDRAGON | 16h |
| 176 | 9.3 | **LISTADOS** | 2010-02-22 | 2010-02-24 |  |  | JULIAN MONDRAGON | 24h |
| 177 | 9.3.1 | ESTADO DE CUENTA | 2010-02-22 | 2010-02-24 |  | must start on 2010-02-22 | JULIAN MONDRAGON | 24h |
| 178 | 9.4 | **TRIBUTARIA** | 2010-03-01 | 2010-03-08 |  |  | JULIAN MONDRAGON | 50.5h |
| 179 | 9.4.1 | INFORMACION EXOGENA | 2010-03-01 | 2010-03-04 |  | must start on 2010-03-01 | JULIAN MONDRAGON | 32h |
| 180 | 9.4.2 | CERTIFICADOS DE RETENCIONES | 2010-03-03 | 2010-03-03 |  | must start on 2010-03-03 | JULIAN MONDRAGON | 2.5h |
| 181 | 9.4.3 | LIBRO DIARIO | 2010-03-05 | 2010-03-05 |  | must start on 2010-03-05 | JULIAN MONDRAGON | 8h |
| 182 | 9.4.4 | MAYOR Y BALANCE | 2010-03-08 | 2010-03-08 |  | must start on 2010-03-08 | JULIAN MONDRAGON | 8h |
| 183 | 9.5 | **DATOS DE CONTROL** | 2009-11-28 | 2009-12-18 |  |  |  | 204h |
| 184 | 9.5.1 | **GENERAL** | 2009-11-28 | 2009-12-03 |  |  |  | 20h |
| 185 | 9.5.1.1 | **Plan contable** | 2009-12-03 | 2009-12-03 | 100% |  | WALTER ANDRES MARQUEZ; JULIAN MONDRAGON | 2h |
| 186 | 9.5.1.1.1 | Adicionar | 2009-12-03 | 2009-12-03 | 100% | must start on 2009-12-03 |  | 0.5h |
| 187 | 9.5.1.1.2 | Consultar | 2009-12-03 | 2009-12-03 | 100% | must start on 2009-12-03 |  | 0.5h |
| 188 | 9.5.1.1.3 | Eliminar | 2009-12-03 | 2009-12-03 | 100% | must start on 2009-12-03 |  | 0.5h |
| 189 | 9.5.1.1.4 | Modificar | 2009-12-03 | 2009-12-03 | 100% | must start on 2009-12-03 |  | 0.5h |

| ID | WBS | Task | Start | Finish | Complete | Constraint | Resources | Work |
| --- | --- | --- | --- | --- | --- | --- | --- | --- |
| 190 | 9.5.1.2 | **ANEXOS CONTABLES** | 2009-12-03 | 2009-12-03 | 100% |  | WALTER ANDRES MARQUEZ | 2h |
| 191 | 9.5.1.2.1 | Adicionar | 2009-12-03 | 2009-12-03 | 100% | must start on 2009-12-03 |  | 0.5h |
| 192 | 9.5.1.2.2 | Consultar | 2009-12-03 | 2009-12-03 | 100% | must start on 2009-12-03 |  | 0.5h |
| 193 | 9.5.1.2.3 | Eliminar | 2009-12-03 | 2009-12-03 | 100% | must start on 2009-12-03 |  | 0.5h |
| 194 | 9.5.1.2.4 | Modificar | 2009-12-03 | 2009-12-03 | 100% | must start on 2009-12-03 |  | 0.5h |
| 195 | 9.5.1.3 | **AUXILIARES CONTABLES** | 2009-12-03 | 2009-12-03 | 100% |  | WALTER ANDRES MARQUEZ | 2h |
| 196 | 9.5.1.3.1 | Adicionar | 2009-12-03 | 2009-12-03 | 100% | must start on 2009-12-03 |  | 0.5h |
| 197 | 9.5.1.3.2 | Consultar | 2009-12-03 | 2009-12-03 | 100% | must start on 2009-12-03 |  | 0.5h |
| 198 | 9.5.1.3.3 | Eliminar | 2009-12-03 | 2009-12-03 | 100% | must start on 2009-12-03 |  | 0.5h |
| 199 | 9.5.1.3.4 | Modificar | 2009-12-03 | 2009-12-03 | 100% | must start on 2009-12-03 |  | 0.5h |
| 200 | 9.5.1.4 | **TIPOS DE DOCUMENTO** | 2009-12-03 | 2009-12-03 | 100% |  | WALTER ANDRES MARQUEZ | 2h |
| 201 | 9.5.1.4.1 | Adicionar | 2009-12-03 | 2009-12-03 | 100% | must start on 2009-12-03 |  | 0.5h |
| 202 | 9.5.1.4.2 | Consultar | 2009-12-03 | 2009-12-03 | 100% | must start on 2009-12-03 |  | 0.5h |
| 203 | 9.5.1.4.3 | Eliminar | 2009-12-03 | 2009-12-03 | 100% | must start on 2009-12-03 |  | 0.5h |
| 204 | 9.5.1.4.4 | Modificar | 2009-12-03 | 2009-12-03 | 100% | must start on 2009-12-03 |  | 0.5h |
| 205 | 9.5.1.5 | **TIPOS DE COMPROBANTE** | 2009-12-03 | 2009-12-03 | 100% |  | WALTER ANDRES MARQUEZ | 2h |
| 206 | 9.5.1.5.1 | Adicionar | 2009-12-03 | 2009-12-03 | 100% | must start on 2009-12-03 |  | 0.5h |
| 207 | 9.5.1.5.2 | Consultar | 2009-12-03 | 2009-12-03 | 100% | must start on 2009-12-03 |  | 0.5h |
| 208 | 9.5.1.5.3 | Eliminar | 2009-12-03 | 2009-12-03 | 100% | must start on 2009-12-03 |  | 0.5h |
| 209 | 9.5.1.5.4 | Modificar | 2009-12-03 | 2009-12-03 | 100% | must start on 2009-12-03 |  | 0.5h |
| 210 | 9.5.1.6 | **PERIODOS CONTABLES** | 2009-12-03 | 2009-12-03 | 100% |  | JULIAN MONDRAGON | 2h |
| 211 | 9.5.1.6.1 | Adicionar | 2009-12-03 | 2009-12-03 | 100% | must start on 2009-12-03 |  | 0.5h |
| 212 | 9.5.1.6.2 | Consultar | 2009-12-03 | 2009-12-03 | 100% | must start on 2009-12-03 |  | 0.5h |
| 213 | 9.5.1.6.3 | Eliminar | 2009-12-03 | 2009-12-03 | 100% | must start on 2009-12-03 |  | 0.5h |
| 214 | 9.5.1.6.4 | Modificar | 2009-12-03 | 2009-12-03 | 100% | must start on 2009-12-03 |  | 0.5h |
| 215 | 9.5.1.7 | TIPOS DE DOCUMENTO BANCARIO | 2009-11-28 | 2009-11-30 | 100% |  |  | 8h |

| ID | WBS | Task | Start | Finish | Complete | Constraint | Resources | Work |
| --- | --- | --- | --- | --- | --- | --- | --- | --- |
| 216 | 9.5.2 | **PROVEEDORES** | 2009-11-28 | 2009-11-30 |  |  |  | 32h |
| 217 | 9.5.2.1 | TIPOS DE COMPRA | 2009-11-28 | 2009-11-30 | 100% |  |  | 8h |
| 218 | 9.5.2.2 | TIPOS DE DEVOLUCION EN COMPRA | 2009-11-28 | 2009-11-30 | 100% |  |  | 8h |
| 219 | 9.5.2.3 | CONCEPTOS DE CONTABILIZACION COMPRAS | 2009-11-28 | 2009-11-30 |  |  |  | 8h |
| 220 | 9.5.2.4 | CONCEPTOS DE CONTABILIZACION DEVOLUCIONES EN COMPRA | 2009-11-28 | 2009-11-30 |  |  |  | 8h |
| 221 | 9.5.3 | **CLIENTES** | 2009-11-28 | 2009-12-18 |  |  |  | 40h |
| 222 | 9.5.3.1 | TIPOS DE VENTA | 2009-12-09 | 2009-12-09 | 100% | must start on 2009-12-09 | JIAVANY ANDRES | 4h |
| 223 | 9.5.3.2 | TIPOS DE DEVOLUCION EN VENTA | 2009-12-09 | 2009-12-09 | 100% | must start on 2009-12-09 | JIAVANY ANDRES | 4h |
| 224 | 9.5.3.3 | TIPOS DE TARJETAS | 2009-11-28 | 2009-11-30 | 100% |  |  | 8h |
| 225 | 9.5.3.4 | CONCEPTOS DE CONTABILIZACION VENTAS | 2009-12-12 | 2009-12-14 | 100% | must start on 2009-12-12 | JIAVANY ANDRES | 8h |
| 226 | 9.5.3.5 | CONCEPTOS DE CONTABILIZACION DEVOLUCIONES EN VENTA | 2009-12-11 | 2009-12-11 | 100% | must start on 2009-12-11 | JIAVANY ANDRES | 8h |
| 227 | 9.5.3.6 | CHEQUES DEVUELTOS | 2009-12-18 | 2009-12-18 |  | must start on 2009-12-18 | JIAVANY ANDRES [50%] | 4h |
| 228 | 9.5.3.7 | ENTIDADES AUTORIZAN CHEQUES | 2009-12-15 | 2009-12-15 | 100% | must start on 2009-12-15 | JIAVANY ANDRES | 4h |
| 229 | 9.5.4 | **TRIBUTARIA** | 2009-11-28 | 2009-11-30 |  |  |  | 40h |
| 230 | 9.5.4.1 | RESOLUCIONES DE LA DIAN | 2009-11-28 | 2009-11-30 | 100% |  |  | 8h |
| 231 | 9.5.4.2 | RESOLUCIONES ICA | 2009-11-28 | 2009-11-30 | 100% |  |  | 8h |
| 232 | 9.5.4.3 | RESOLUCIONES AUTORETENCION | 2009-11-28 | 2009-11-30 | 100% |  |  | 8h |
| 233 | 9.5.4.4 | FORMATOS INFORMACION EXOGENA | 2009-11-28 | 2009-11-30 | 100% |  |  | 8h |
| 234 | 9.5.4.5 | CONCEPTOS INFORMACION EXOGENA | 2009-11-28 | 2009-11-30 | 100% |  |  | 8h |
| 235 | 9.5.5 | **FINANCIERA** | 2009-11-28 | 2009-11-30 |  |  |  | 48h |
| 236 | 9.5.5.1 | ACTIVIDADES ECONOMICAS | 2009-11-28 | 2009-11-30 | 100% |  |  | 8h |
| 237 | 9.5.5.2 | CAJAS | 2009-11-28 | 2009-11-30 | 100% |  |  | 8h |
| 238 | 9.5.5.3 | BANCOS | 2009-11-28 | 2009-11-30 | 100% |  |  | 8h |
| 239 | 9.5.5.4 | CONCEPTOS FLUJO DE EFECTIVO | 2009-11-28 | 2009-11-30 | 100% |  |  | 8h |
| 240 | 9.5.5.5 | TIPOS DE MONEDA | 2009-11-28 | 2009-11-30 | 100% |  |  | 8h |
| 241 | 9.5.5.6 | TASAS DE CAMBIO | 2009-11-28 | 2009-11-30 | 100% |  |  | 8h |

| ID | WBS | Task | Start | Finish | Complete | Work |
| --- | --- | --- | --- | --- | --- | --- |
| 242 | 9.5.6 | **TASAS** | 2009-11-28 | 2009-11-30 |  | 24h |
| 243 | 9.5.6.1 | TASAS | 2009-11-28 | 2009-11-30 | 100% | 8h |
| 244 | 9.5.6.2 | VIGENCIA DE TASAS | 2009-11-28 | 2009-11-30 | 100% | 8h |
| 245 | 9.5.6.3 | ICA POR ACTIVIDAD ECONOMICA | 2009-11-28 | 2009-11-30 | 100% | 8h |
